Schedule from MS Project, 2026-02-09 to 2026-06-22, status date 2026-05-19, costs in р., A marks actual dates.
Microsoft

## Calendars

- Стандартный: Mon-Fri 09:00-13:00, 14:00-18:00; Sat-Sun off.

## Resources

| Resource | Rate | Cost per use |
| --- | --- | --- |
| Заказчик |  |  |
| Разработчик | 706 |  |
| Excalidraw |  |  |
| Word |  |  |
| Obsidian |  |  |
| VS Code |  |  |
| LLM-агенты |  |  |
| Литература |  |  |
| Интернет | 900 |  |
| Науч. рук. | 220 |  |
| SQLite |  |  |
| Rust |  |  |
| ПК |  | 80000 |
| GitFlic |  |  |

## Schedule

| ID | WBS | Task | Duration | Start | Finish | Predecessors | Complete | Remaining | Total slack | Constraint | Resources | Work | Actual work | Cost | Actual cost |
| --- | --- | --- | --- | --- | --- | --- | --- | --- | --- | --- | --- | --- | --- | --- | --- |
| 1 | 1 | **Диплом** | 95.88d | 2026-02-09 A | 2026-06-22 |  | 50% | 48.2d | 0d |  | ПК; Obsidian; Word; Интернет; Литература | 2194.5h | 1360.88h | 939,803 | 719,297.92 |
| 2 | 1.1 | Анализ требований (ТЗ) | 5d | 2026-02-09 A | 2026-02-13 A |  | 100% |  |  | start no earlier than 2026-02-09 | Заказчик; Разработчик; Науч. рук. | 80h | 80h | 28,240 | 28,240 |
| 3 | 1.2 | **Подготовительные работы** | 9d | 2026-02-16 A | 2026-02-26 A |  | 100% |  |  |  |  | 216h | 216h | 155,196 | 155,196 |
| 4 | 1.2.1 | Сравнительный анализ отечественных и зарубежных аналогов проектируемой системы | 9d | 2026-02-16 A | 2026-02-26 A | 2 | 100% |  |  | start no earlier than 2026-02-16 | LLM-агенты; Интернет; Разработчик; Литература | 72h | 72h | 51,732 | 51,732 |
| 5 | 1.2.2 | Выбор технологии, среды и языка программирования | 9d | 2026-02-16 A | 2026-02-26 A | 2 | 100% |  |  | start no earlier than 2026-02-16 | LLM-агенты; Интернет; Разработчик; Литература | 72h | 72h | 51,732 | 51,732 |
| 6 | 1.2.3 | Анализ процесса обработки информации, выбор структур данных для её хранения, выбор методов и алгоритмов решения задачи | 9d | 2026-02-16 A | 2026-02-26 A | 2 | 100% |  |  | start no earlier than 2026-02-16 | LLM-агенты; Интернет; Разработчик; Литература | 72h | 72h | 51,732 | 51,732 |
| 7 | 1.3 | **Разработка спецификаций проектируемой системы** | 26d | 2026-02-27 A | 2026-04-03 A |  | 100% |  |  |  |  | 320h | 320h | 225,920 | 225,920 |
| 8 | 1.3.1 | Построение диаграмм вариантов использования | 5d | 2026-02-27 A | 2026-03-05 A | 6 | 100% |  |  | start no earlier than 2026-02-27 | Разработчик; Excalidraw; LLM-агенты | 40h | 40h | 28,240 | 28,240 |
| 9 | 1.3.2 | Построение контекстной диаграммы классов | 5d | 2026-02-27 A | 2026-03-05 A | 6 | 100% |  |  | start no earlier than 2026-02-27 | Разработчик; Excalidraw; LLM-агенты | 40h | 40h | 28,240 | 28,240 |
| 10 | 1.3.3 | Построение диаграмм последовательностей системы | 5d | 2026-03-08 A | 2026-03-13 A | 6 | 100% |  |  | start no earlier than 2026-03-09 | Разработчик; Excalidraw; LLM-агенты | 40h | 40h | 28,240 | 28,240 |
| 11 | 1.3.4 | Построение диаграммы деятельностей варианта использования | 5d | 2026-03-08 A | 2026-03-13 A | 6 | 100% |  |  | start no earlier than 2026-03-09 | Разработчик; Excalidraw; LLM-агенты | 40h | 40h | 28,240 | 28,240 |
| 12 | 1.3.5 | Построение диаграммы переходов состояний | 10d | 2026-03-15 A | 2026-03-27 A | 6 | 100% |  |  | start no earlier than 2026-03-23 | Разработчик; Excalidraw; LLM-агенты | 80h | 80h | 56,480 | 56,480 |
| 13 | 1.3.6 | Построение диаграммы отношений компонентов данных | 10d | 2026-03-22 A | 2026-04-03 A | 6 | 100% |  |  | start no earlier than 2026-03-23 | Разработчик; Excalidraw; LLM-агенты | 80h | 80h | 56,480 | 56,480 |
| 14 | 1.4 | **Проектирование программного обеспечения** | 30d | 2026-04-06 A | 2026-05-18 |  | 64% | 10.88d | 25.88d |  |  | 291.25h | 255h | 205,622.5 | 180,030 |
| 15 | 1.4.1 | Проектирование структуры системы и построение диаграммы пакетов | 10d | 2026-04-06 A | 2026-04-17 A | 13 | 100% |  |  | start no earlier than 2026-04-06 | Разработчик; LLM-агенты; Excalidraw; SQLite | 80h | 80h | 56,480 | 56,480 |
| 16 | 1.4.2 | Проектирование функциональных пакетов | 20d | 2026-04-20 A | 2026-05-15 A | 15 | 100% |  |  | start no earlier than 2026-04-17 | Разработчик; LLM-агенты; Excalidraw | 160h | 160h | 112,960 | 112,960 |
| 17 | 1.4.3 | Построение диаграммы компонентов | 20d | 2026-04-20 A | 2026-05-18 | 16 | 9% | 18.12d | 25.88d | finish no earlier than 2026-05-15 | Разработчик [25%]; LLM-агенты [109.4%]; Excalidraw [109.4%] | 51.25h | 15h | 36,182.5 | 10,590 |
| 18 | 1.5 | **Разработка программного обеспечения** | 26.88d | 2026-05-15 A | 2026-06-22 |  | 11% | 23.88d | 0d |  |  | 209.75h | 70h | 148,083.5 | 49,420 |
| 19 | 1.5.1 | Разработка пакета "Обработка эмбеддингов" | 26.88d | 2026-05-15 A | 2026-06-22 | 15, 16 | 7% | 25d | 0d | finish no earlier than 2026-06-22 | VS Code [107.2%]; LLM-агенты [107.2%]; Rust [107.2%]; GitFlic [107.2%]; Разработчик [25%] | 65h | 15h | 45,890 | 10,590 |
| 20 | 1.5.2 | Разработка пакета "Интерфейс пользователя" | 25.88d | 2026-05-18 | 2026-06-22 | 6, 8 |  |  | 0d | finish no earlier than 2026-06-22 | Excalidraw; VS Code; LLM-агенты; Разработчик [25%] | 51.75h |  | 36,535.5 |  |
| 21 | 1.5.3 | Выбор стратегии тестирования, разработки тестов, программа и методика испытаний | 25.88d | 2026-05-18 A | 2026-06-22 | 2 | 27% | 19d | 0d | finish no earlier than 2026-06-22 | VS Code; LLM-агенты; Rust; Разработчик [25%]; GitFlic | 93h | 55h | 65,658 | 38,830 |
| 22 | 1.6 | Технико-экономическое обоснование | 25.88d | 2026-05-18 | 2026-06-22 | 2, 4, 6 |  |  | 0d | finish no earlier than 2026-06-22 | Науч. рук. [50%]; Заказчик [50%]; Разработчик [50%] | 310.5h |  | 95,841 |  |
